# 迈科融资头寸管理系统-计划

Schedule from MS Project, 2015-04-16 to 2015-06-08.
Microsoft

## Calendars

- 标准: Mon-Fri 08:00-12:00, 13:00-17:00; Sat-Sun off.

## Resources

| Resource |
| --- |
| PM |
| DEV |
| SYS |
| USER |
| QA |
| DB |
| CS |

## Schedule

| ID | WBS | Task | Type | Duration | Start | Finish | Predecessors | Total slack | Free slack | Constraint | Resources | Work |
| --- | --- | --- | --- | --- | --- | --- | --- | --- | --- | --- | --- | --- |
| 1 | 1 | **第一阶段:项目准备** |  | 4d? | 2015-04-16 | 2015-04-21 |  | 34d |  |  |  | 61.3h |
| 2 | 1.1 | **项目启动** |  | 1d? | 2015-04-16 | 2015-04-16 |  | 35.5d |  |  | PM; DEV | 24.1h |
| 3 | 1.1.1 | 项目启动 | milestone | 0d? | 2015-04-16 | 2015-04-16 |  | 38d |  | start no earlier than 2015-04-16 |  |  |
| 4 | 1.1.2 | 确定总体技术架构和实现 |  | 0.5d | 2015-04-16 | 2015-04-16 |  | 37.5d |  | start no earlier than 2015-04-16 | PM; DEV | 6.1h |
| 5 | 1.1.3 | 确定项目标和实施要求 |  | 0.5d | 2015-04-16 | 2015-04-16 |  | 35.5d | 0d | start no earlier than 2015-04-16 | PM; USER | 8h |
| 6 | 1.1.4 | 发起软件开发需求流程 | milestone | 0d | 2015-04-16 | 2015-04-16 |  | 37d |  | finish no earlier than 2015-04-16 | USER |  |
| 7 | 1.2 | **资源准备** |  | 0.5d | 2015-04-16 | 2015-04-16 | 5 | 35.5d |  |  |  | 5.2h |
| 8 | 1.2.1 | 项目小组人员职责及分工 |  | 0.5d | 2015-04-16 | 2015-04-16 |  | 37d |  | start no earlier than 2015-04-16 | PM; DEV | 5.2h |
| 9 | 1.2.2 | 定义项目组织结构图 | milestone | 0d | 2015-04-16 | 2015-04-16 |  | 35.5d | 0d | start no earlier than 2007-03-26 | PM |  |
| 10 | 1.2.3 | 建立项目交流QQ群 | milestone | 0d | 2015-04-16 | 2015-04-16 | 9 | 35.5d | 0.5d | start no earlier than 2007-08-01 | PM |  |
| 11 | 1.3 | **搭建环境** |  | 2d | 2015-04-17 | 2015-04-20 | 10 | 35d |  |  |  | 16h |
| 12 | 1.3.1 | 确定初始系统技术环境 |  | 2d | 2015-04-17 | 2015-04-20 |  | 35d |  | start no earlier than 2015-04-17 | DEV | 16h |
| 13 | 1.4 | **项目文档准备** |  | 2d | 2015-04-20 | 2015-04-21 |  | 34d |  |  |  | 16h |
| 14 | 1.4.1 | 确定各阶段文档 |  | 2d | 2015-04-20 | 2015-04-21 |  | 34d |  | start no earlier than 2015-04-20 | PM | 16h |
| 15 | 2 | **第二阶段：项目分析** |  | 4.5d | 2015-04-16 | 2015-04-22 |  | 31.5d |  |  |  | 57.6h |
| 16 | 2.1 | 业务需求交流与分析 |  | 2d | 2015-04-16 | 2015-04-17 |  | 31.5d | 0d | start no earlier than 2015-04-16 | PM; DEV | 20.8h |
| 17 | 2.2 | 业务需求文档整理 |  | 2d | 2015-04-20 | 2015-04-21 | 16 | 31.5d | 0d | start no earlier than 2015-04-20 | PM; DEV | 20.8h |
| 18 | 2.3 | 分析阶段总结会议 |  | 0.5d | 2015-04-22 | 2015-04-22 | 17 | 31.5d | 0.5d | finish no earlier than 2007-08-21 | PM; USER | 8h |
| 19 | 2.4 | 业务需求文档签署 |  | 0.5d | 2015-04-22 | 2015-04-22 | 17 | 33.5d |  |  | PM; USER | 8h |
| 20 | 3 | **第三阶段：项目开发** |  | 15d | 2015-04-23 | 2015-05-13 |  | 18d |  |  |  | 144h |
| 21 | 3.1 | **系统设计** |  | 2d | 2015-04-23 | 2015-04-24 |  | 31d |  |  |  | 32h |
| 22 | 3.1.1 | 建立开发设计文档 |  | 2d | 2015-04-23 | 2015-04-24 | 18 | 31d |  | finish no earlier than 2015-04-24 | PM; DEV | 32h |
| 23 | 3.2 | **应用程序代码编写** |  | 15d | 2015-04-23 | 2015-05-13 |  | 18d |  |  |  | 112h |
| 24 | 3.2.1 | 开发前期工作 |  | 2d | 2015-04-23 | 2015-04-24 |  | 31d |  | start no earlier than 2015-04-23 | DEV | 16h |
| 25 | 3.2.2 | 质押申请单模块 |  | 4d | 2015-04-27 | 2015-04-30 |  | 27d |  | start no earlier than 2015-04-27 | DEV | 32h |
| 26 | 3.2.3 | 赎回申请单模块 |  | 4d | 2015-05-04 | 2015-05-07 |  | 18d | 0d | start no earlier than 2015-05-04 | DEV | 32h |
| 27 | 3.2.4 | 代码单元测试 |  | 4d | 2015-05-08 | 2015-05-13 | 26 | 18d |  | finish no earlier than 2015-05-13 | DEV | 32h |

Notes:
- 23: 5.1-3 劳动节放假
- 24: 包括数据库设计、webService交互、前台UI框架等准备工作

| ID | WBS | Task | Type | Duration | Start | Finish | Predecessors | Total slack | Free slack | Constraint | Resources | Work |
| --- | --- | --- | --- | --- | --- | --- | --- | --- | --- | --- | --- | --- |
| 28 | 4 | **第四阶段：项目测试** |  | 4.5d | 2015-05-14 | 2015-05-20 |  | 13d |  |  |  | 64.1h |
| 29 | 4.1 | 测试服务器端安装 |  | 0.5d | 2015-05-14 | 2015-05-14 |  | 17d |  | finish no earlier than 2015-05-14 | PM; DEV | 6.4h |
| 30 | 4.2 | 用户操作说明书编写 |  | 0.5d | 2015-05-14 | 2015-05-14 |  | 17d |  | finish no earlier than 2015-05-14 | PM; DEV | 8h |
| 31 | 4.3 | 用户操作培训 |  | 0.5d | 2015-05-15 | 2015-05-15 |  | 16d |  | finish no earlier than 2015-05-15 | PM | 4h |
| 32 | 4.4 | 集成测试及修改(第一轮) |  | 2.5d | 2015-05-15 | 2015-05-19 |  | 13d | 0d | finish no earlier than 2015-05-19 | DEV; USER; PM | 32h |
| 33 | 4.5 | 集成测试及修改(第二轮) |  | 1d | 2015-05-20 | 2015-05-20 | 32 | 13d |  | finish no earlier than 2015-05-20 | DEV; USER; PM | 13.7h |
| 34 | 5 | **第五阶段：项目部署** |  | 3d? | 2015-05-20 | 2015-05-22 |  | 1d |  |  |  | 32h |
| 35 | 5.1 | **上线前基础数据完善** |  | 1d | 2015-05-20 | 2015-05-20 |  | 13d |  |  |  | 24h |
| 36 | 5.1.1 | 基础数据准备 |  | 1d | 2015-05-20 | 2015-05-20 |  | 13d |  | start no earlier than 2015-05-20 | DB; DEV; SYS | 24h |
| 37 | 5.2 | **系统上线** |  | 2d? | 2015-05-21 | 2015-05-22 |  | 0d |  |  |  | 8h |
| 38 | 5.2.1 | 系统上线 | milestone | 0d? | 2015-05-21 | 2015-05-21 |  | 0d |  | must start on 2015-05-21 |  |  |
| 39 | 5.2.2 | 服务器初始化 |  | 1d | 2015-05-21 | 2015-05-21 |  | 0d |  | start no earlier than 2015-05-21 | DEV | 8h |
| 40 | 5.2.3 | 系统上线正式运行 |  | 1d | 2015-05-22 | 2015-05-22 | 39 | 0d |  | finish no earlier than 2015-05-22 |  |  |
| 41 | 6 | **第六阶段：项目关闭** |  | 11d | 2015-05-25 | 2015-06-08 |  | 0d |  |  |  | 205.32h |
| 42 | 6.1 | 运行持续改进 |  | 10d | 2015-05-25 | 2015-06-05 | 40 | 0d |  | start no earlier than 2015-05-25 | DEV; PM; USER | 181.32h |
| 43 | 6.2 | 项目总结会议 |  | 1d | 2015-06-08 | 2015-06-08 | 42 | 0d |  | finish no earlier than 2007-06-22 | PM; DEV; USER | 24h |
